# IAM System Deployment - Corella Health Group

Schedule from GanttProject, 2026-11-02 to 2027-07-28.
Corella Health Group
Schedule baseline v1.0. Generated from tools/schedule.py.

## Calendars

- Project calendar: Mon-Fri working; Sat-Sun off. Exceptions (off unless hours are given): 2026-12-24 (Christmas shutdown), 2026-12-25 (Christmas Day), 2026-12-28 (Boxing Day (additional day)), 2026-12-29 to 2026-12-31 (Christmas shutdown), 2027-01-01 (New Year's Day), 2027-01-26 (Australia Day), 2027-03-26 (Good Friday), 2027-03-29 (Easter Monday), 2027-06-14 (King's Birthday).

## Schedule

| ID | WBS | Task | Type | Duration | Start | Finish | Predecessors |
| --- | --- | --- | --- | --- | --- | --- | --- |
| 1 | 1 | **1.1 Project management** |  | 1d | 2026-11-02 | 2026-11-02 |  |
| 2 | 1.1 | 1.1.1 Project charter |  | 5d | 2026-11-02 | 2026-11-06 |  |
| 3 | 1.2 | M1 Charter approved | milestone | 0d | 2026-11-06 | 2026-11-06 | 2 |
| 4 | 1.3 | 1.1.2 Stakeholder register and communication plan |  | 4d | 2026-11-09 | 2026-11-12 | 3 |
| 5 | 1.4 | 1.1.3 Project management plan and baselines |  | 8d | 2026-11-13 | 2026-11-24 | 4 |
| 6 | 1.5 | M2 Plan baselined (Gate 1) | milestone | 0d | 2026-11-24 | 2026-11-24 | 5 |
| 7 | 1.6 | 1.1.4 Monitoring, control and reporting |  | 155d | 2026-11-25 | 2027-07-14 | 6 |
| 8 | 2 | **1.2 Requirements and design** |  | 1d | 2026-11-09 | 2026-11-09 |  |
| 9 | 2.1 | 1.2.1 Current-state identity and application assessment |  | 10d | 2026-11-09 | 2026-11-20 | 3 |
| 10 | 2.2 | 1.2.2 Requirements specification |  | 8d | 2026-11-23 | 2026-12-02 | 9 |
| 11 | 2.3 | 1.2.3 Privacy impact assessment |  | 8d | 2026-12-03 | 2026-12-14 | 10 |
| 12 | 2.4 | 1.2.4 IAM platform selection (RFQ and evaluation) |  | 15d | 2026-12-03 | 2026-12-23 | 10 |
| 13 | 2.5 | M3 Platform contract signed | milestone | 0d | 2026-12-23 | 2026-12-23 | 6, 11, 12 |
| 14 | 2.6 | 1.2.5 Role model (RBAC role catalogue) |  | 12d | 2026-12-03 | 2026-12-18 | 10 |
| 15 | 2.7 | 1.2.6 Solution architecture and security design |  | 10d | 2027-01-04 | 2027-01-15 | 13 |
| 16 | 2.8 | M4 Design approved (Gate 2) | milestone | 0d | 2027-01-15 | 2027-01-15 | 14, 15 |
| 17 | 3 | **1.3 IAM platform build** |  | 1d | 2027-01-18 | 2027-01-18 |  |
| 18 | 3.1 | 1.3.1 Tenant configuration and HR directory sync |  | 8d | 2027-01-18 | 2027-01-28 | 16 |
| 19 | 3.2 | 1.3.2 Joiner-mover-leaver workflows |  | 15d | 2027-01-29 | 2027-02-18 | 18 |
| 20 | 3.3 | 1.3.3 MFA and conditional access policies |  | 6d | 2027-01-29 | 2027-02-05 | 18 |
| 21 | 3.4 | 1.3.4 Privileged access management |  | 10d | 2027-02-08 | 2027-02-19 | 20 |
| 22 | 3.5 | 1.3.5 Access review campaigns |  | 6d | 2027-02-22 | 2027-03-01 | 19, 21 |
| 23 | 4 | **1.4 Application integration** |  | 1d | 2027-02-08 | 2027-02-08 |  |
| 24 | 4.1 | 1.4.1 SSO wave 1: M365, intranet, VPN, rostering |  | 10d | 2027-02-08 | 2027-02-19 | 20 |
| 25 | 4.2 | 1.4.2 SSO wave 2: EMR, PAS, HRIS, payroll, finance |  | 15d | 2027-02-22 | 2027-03-12 | 24 |
| 26 | 4.3 | 1.4.3 SSO wave 3: pathology, imaging, incidents |  | 10d | 2027-03-15 | 2027-03-30 | 25 |
| 27 | 4.4 | 1.4.4 Provisioning connectors: M365, EMR, PAS |  | 12d | 2027-02-05 | 2027-02-22 | 19SS+5d |

| ID | WBS | Task | Type | Duration | Start | Finish | Predecessors |
| --- | --- | --- | --- | --- | --- | --- | --- |
| 28 | 5 | **1.5 Testing** |  | 1d | 2027-01-18 | 2027-01-18 |  |
| 29 | 5.1 | 1.5.1 Test strategy and test cases |  | 6d | 2027-01-18 | 2027-01-25 | 16 |
| 30 | 5.2 | 1.5.2 System and integration testing |  | 12d | 2027-03-31 | 2027-04-15 | 21, 22, 26, 27, 29 |
| 31 | 5.3 | 1.5.3 Penetration testing |  | 8d | 2027-04-16 | 2027-04-27 | 30 |
| 32 | 5.4 | 1.5.4 User acceptance testing |  | 10d | 2027-04-16 | 2027-04-29 | 30 |
| 33 | 5.5 | M5 Go-live readiness (Gate 3) | milestone | 0d | 2027-04-29 | 2027-04-29 | 31, 32 |
| 34 | 6 | **1.6 Deployment and adoption** |  | 1d | 2027-02-22 | 2027-02-22 |  |
| 35 | 6.1 | 1.6.1 Training materials and champions network |  | 10d | 2027-02-22 | 2027-03-05 | 24 |
| 36 | 6.2 | 1.6.2 Pilot: head office and one clinic (150 users) |  | 10d | 2027-04-30 | 2027-05-13 | 33, 35 |
| 37 | 6.3 | 1.6.3 Phased rollout to all sites |  | 20d | 2027-05-19 | 2027-06-16 | 36FS+3d |
| 38 | 6.4 | M6 Go-live complete | milestone | 0d | 2027-06-16 | 2027-06-16 | 37 |
| 39 | 6.5 | 1.6.4 Hypercare, first access review, legacy clean-up |  | 20d | 2027-06-17 | 2027-07-14 | 38 |
| 40 | 7 | **1.7 Closure** |  | 1d | 2027-07-15 | 2027-07-15 |  |
| 41 | 7.1 | 1.7.1 Handover to IT operations |  | 5d | 2027-07-15 | 2027-07-21 | 39 |
| 42 | 7.2 | 1.7.2 Benefits check, lessons learned, closure report |  | 5d | 2027-07-22 | 2027-07-28 | 41 |
| 43 | 7.3 | M7 Project closed | milestone | 0d | 2027-07-28 | 2027-07-28 | 42 |
