WBS / ID,Task,Duration (working days),Start,Finish,Predecessors,Total float (days),Critical,Resources
1.1.1,Project charter,5,2026-11-02,2026-11-06,-,0,Yes,"Toufiq, Sponsor"
M1,Charter approved,0,2026-11-06,2026-11-06,1.1.1,0,Yes,Sponsor
1.1.2,Stakeholder register and communication plan,4,2026-11-09,2026-11-12,M1,10,No,Kritika
1.1.3,Project management plan and baselines,8,2026-11-13,2026-11-24,1.1.2,10,No,Toufiq
M2,Plan baselined (Gate 1),0,2026-11-24,2026-11-24,1.1.3,10,No,Sponsor
1.1.4,"Monitoring, control and reporting",155,2026-11-25,2027-07-14,M2,10,No,Toufiq
1.2.1,Current-state identity and application assessment,10,2026-11-09,2026-11-20,M1,0,Yes,"Architect, IT Ops"
1.2.2,Requirements specification,8,2026-11-23,2026-12-02,1.2.1,0,Yes,"Architect, Fardin"
1.2.3,Privacy impact assessment,8,2026-12-03,2026-12-14,1.2.2,7,No,Privacy Officer
1.2.4,IAM platform selection (RFQ and evaluation),15,2026-12-03,2026-12-23,1.2.2,0,Yes,"Toufiq, Fardin"
M3,Platform contract signed,0,2026-12-23,2026-12-23,"1.2.4, 1.2.3, M2",0,Yes,Sponsor
1.2.5,Role model (RBAC role catalogue),12,2026-12-03,2026-12-18,1.2.2,13,No,"Architect, HR"
1.2.6,Solution architecture and security design,10,2027-01-04,2027-01-15,M3,0,Yes,"Architect, Partner"
M4,Design approved (Gate 2),0,2027-01-15,2027-01-15,"1.2.6, 1.2.5",0,Yes,Sponsor
1.3.1,Tenant configuration and HR directory sync,8,2027-01-18,2027-01-28,M4,0,Yes,Partner
1.3.2,Joiner-mover-leaver workflows,15,2027-01-29,2027-02-18,1.3.1,20,No,"Partner, HR"
1.3.3,MFA and conditional access policies,6,2027-01-29,2027-02-05,1.3.1,0,Yes,Architect
1.3.4,Privileged access management,10,2027-02-08,2027-02-19,1.3.3,19,No,Architect
1.3.5,Access review campaigns,6,2027-02-22,2027-03-01,"1.3.2, 1.3.4",19,No,Architect
1.4.1,"SSO wave 1: M365, intranet, VPN, rostering",10,2027-02-08,2027-02-19,1.3.3,0,Yes,Partner
1.4.2,"SSO wave 2: EMR, PAS, HRIS, payroll, finance",15,2027-02-22,2027-03-12,1.4.1,0,Yes,Partner
1.4.3,"SSO wave 3: pathology, imaging, incidents",10,2027-03-15,2027-03-30,1.4.2,0,Yes,Partner
1.4.4,"Provisioning connectors: M365, EMR, PAS",12,2027-02-05,2027-02-22,1.3.2 SS+5d,24,No,Partner
1.5.1,Test strategy and test cases,6,2027-01-18,2027-01-25,M4,43,No,Fardin
1.5.2,System and integration testing,12,2027-03-31,2027-04-15,"1.4.3, 1.4.4, 1.3.4, 1.3.5, 1.5.1",0,Yes,"Fardin, Partner"
1.5.3,Penetration testing,8,2027-04-16,2027-04-27,1.5.2,2,No,Pen tester
1.5.4,User acceptance testing,10,2027-04-16,2027-04-29,1.5.2,0,Yes,"Fardin, Clinical testers"
M5,Go-live readiness (Gate 3),0,2027-04-29,2027-04-29,"1.5.3, 1.5.4",0,Yes,Sponsor
1.6.1,Training materials and champions network,10,2027-02-22,2027-03-05,1.4.1,37,No,Kritika
1.6.2,Pilot: head office and one clinic (150 users),10,2027-04-30,2027-05-13,"M5, 1.6.1",0,Yes,"Mahir, Service desk"
1.6.3,Phased rollout to all sites,20,2027-05-19,2027-06-16,1.6.2 FS+3d,0,Yes,"Mahir, Partner"
M6,Go-live complete,0,2027-06-16,2027-06-16,1.6.3,0,Yes,Sponsor
1.6.4,"Hypercare, first access review, legacy clean-up",20,2027-06-17,2027-07-14,M6,0,Yes,"IT Ops, Architect"
1.7.1,Handover to IT operations,5,2027-07-15,2027-07-21,1.6.4,0,Yes,"Mahir, IT Ops"
1.7.2,"Benefits check, lessons learned, closure report",5,2027-07-22,2027-07-28,1.7.1,0,Yes,Toufiq
M7,Project closed,0,2027-07-28,2027-07-28,1.7.2,0,Yes,Sponsor
